# ljekarna

Schedule from MS Project, 2014-03-26 to 2014-06-12, costs in kn.
Ljekarna

## Calendars

- Standard: Mon-Fri 18:00-21:00; Sat-Sun off. Exceptions (off unless hours are given): 2014-05-01 (1.5.2014.).

## Resources

| Resource | Rate |
| --- | --- |
| Luka | 50 |
| Filip | 50 |
| Ivana | 50 |
| Tea | 50 |
| Josip | 50 |
| Laptop1 | 10 |
| Laptop2 | 10 |
| Laptop3 | 10 |
| Laptop4 | 10 |
| Laptop5 | 10 |
| Projektor | 10 |

## Schedule

| ID | WBS | Task | Type | Duration | Start | Finish | Predecessors | Total slack | Resources | Work | Cost |
| --- | --- | --- | --- | --- | --- | --- | --- | --- | --- | --- | --- |
| 1 | 1 | **Ljekarna.NET** |  | 20.81d | 2014-03-26 | 2014-06-12 |  | 0d |  | 412h | 20,990 |
| 2 | 1.1 | POČETAK PROJEKTA | milestone | 0d | 2014-03-26 | 2014-03-26 |  | 0d |  |  |  |
| 3 | 1.2 | **Planiranje projekta** |  | 1.31d | 2014-03-26 | 2014-03-31 | 2 | 0d |  | 31.5h | 1,625 |
| 4 | 1.2.1 | Definiranje projektnog tima |  | 2h | 2014-03-26 | 2014-03-26 | 2 | 0d | Filip; Ivana; Josip; Luka; Tea | 10h | 500 |
| 5 | 1.2.2 | **Prvi sastanak** |  | 1.06d | 2014-03-26 | 2014-03-31 | 4 | 0d |  | 21.5h | 1,125 |
| 6 | 1.2.2.1 | Proučavanje korisničkih zahtjeva |  | 3h | 2014-03-26 | 2014-03-27 | 4 | 0d | Filip; Josip; Laptop1; Luka | 9h | 460 |
| 7 | 1.2.2.2 | **Definiranje projekta** |  | 0.69d | 2014-03-27 | 2014-03-31 | 6 | 0d |  | 12.5h | 665 |
| 8 | 1.2.2.2.1 | Opis domene projekta |  | 1h | 2014-03-27 | 2014-03-27 | 6 | 0d | Filip; Laptop1 | 1h | 60 |
| 9 | 1.2.2.2.2 | Dizajniranje arhitekture sustava |  | 3h | 2014-03-28 | 2014-03-28 | 8 | 0d | Ivana; Josip; Laptop2; Luka | 9h | 460 |
| 10 | 1.2.2.2.3 | Specificiranje funkcionalnosti aplikacije |  | 1h | 2014-03-31 | 2014-03-31 | 9 | 0d | Josip; Laptop3; Luka | 2h | 110 |
| 11 | 1.2.2.2.4 | Odabir potrebne tehnologije |  | 30min | 2014-03-31 | 2014-03-31 | 10 | 0d | Filip; Laptop1 | 0.5h | 35 |
| 12 | 1.2.3 | ZAVRŠETAK PRVOG SASTANKA | milestone | 0d | 2014-03-31 | 2014-03-31 | 5 | 0d |  |  |  |
| 13 | 1.3 | ZAVRŠEKTA PLANIRANJA PROJEKTA | milestone | 0d | 2014-03-31 | 2014-03-31 | 3 | 0d |  |  |  |
| 14 | 1.4 | **Modeliranje** |  | 4.88d | 2014-03-31 | 2014-04-17 | 13 | 0d |  | 111.5h | 5,795 |
| 15 | 1.4.1 | **Drugi sastanak** |  | 1.75d | 2014-03-31 | 2014-04-07 | 13 | 0d |  | 24.5h | 1,305 |
| 16 | 1.4.1.1 | Rekapitulacija prvog sastanka |  | 30min | 2014-03-31 | 2014-03-31 | 13 | 0d | Filip; Ivana; Josip; Luka; Tea | 2.5h | 125 |
| 17 | 1.4.1.2 | Raspodjela zadataka članovima tima |  | 30min | 2014-03-31 | 2014-03-31 | 16 | 0d | Laptop4; Luka | 0.5h | 35 |
| 18 | 1.4.1.3 | Specifikacija korisničkih zahtjeva |  | 3h | 2014-03-31 | 2014-04-01 | 17 | 0d | Ivana; Laptop5; Tea | 6h | 310 |
| 19 | 1.4.1.4 | Analiza poslovne domene |  | 2h | 2014-04-01 | 2014-04-02 | 18 | 0d | Josip; Laptop3; Tea | 4h | 210 |
| 20 | 1.4.1.5 | Izrada gantograma aktivnosti |  | 4h | 2014-04-02 | 2014-04-03 | 19 | 0d | Josip; Laptop3 | 4h | 210 |
| 21 | 1.4.1.6 | Izrada proračuna i budžeta |  | 3h | 2014-04-03 | 2014-04-04 | 20 | 0d | Ivana; Laptop2; Laptop5; Tea | 6h | 320 |
| 22 | 1.4.1.7 | Izrada ponude naručitelju |  | 60min | 2014-04-04 | 2014-04-07 | 21 | 0d | Ivana; Laptop2; Laptop5; Tea | 1.5h | 95 |
| 23 | 1.4.2 | ZAVRŠETAK DRUGOG SASTANKA | milestone | 0d | 2014-04-07 | 2014-04-07 | 15 | 3.12d |  |  |  |
| 24 | 1.4.3 | **Modeliranje problemske domene UML dijagramima** |  | 1.75d | 2014-04-07 | 2014-04-11 | 22 | 0d |  | 39h | 2,050 |
| 25 | 1.4.3.1 | **Izrada UML dijagrama aktivnosti** |  | 0.5d | 2014-04-07 | 2014-04-08 | 22 | 0d |  | 4h | 220 |
| 26 | 1.4.3.1.1 | Dijagram aktivnosti prodaje |  | 2h | 2014-04-07 | 2014-04-07 | 22 | 0d | Filip; Laptop1 | 2h | 110 |
| 27 | 1.4.3.1.2 | Dijagram aktivnosti naručivanja |  | 2h | 2014-04-07 | 2014-04-08 | 26 | 0d | Filip; Laptop1 | 2h | 110 |
| 28 | 1.4.3.2 | Izrada UML dijagrama slučajeva korištenja |  | 1h | 2014-04-08 | 2014-04-08 | 27 | 0d | Filip; Laptop1; Laptop4; Luka | 2h | 120 |
| 29 | 1.4.3.3 | Izrada UML dijagram klasa |  | 3h | 2014-04-08 | 2014-04-09 | 28 | 0d | Laptop4; Luka | 3h | 160 |
| 30 | 1.4.3.4 | Izrada projektne dokumentacije za prvu fazu |  | 6h | 2014-04-09 | 2014-04-11 | 29 | 0d | Filip; Ivana; Josip; Laptop1; Laptop2; Laptop3; Laptop4; Laptop5; Luka; Tea | 30h | 1,550 |

| ID | WBS | Task | Type | Duration | Start | Finish | Predecessors | Total slack | Resources | Work | Cost |
| --- | --- | --- | --- | --- | --- | --- | --- | --- | --- | --- | --- |
| 31 | 1.4.4 | **Modeliranje baze podataka** |  | 1.38d | 2014-04-11 | 2014-04-17 | 30 | 0d |  | 48h | 2,440 |
| 32 | 1.4.4.1 | Izrada ERA modela |  | 8h | 2014-04-11 | 2014-04-16 | 30 | 0d | Filip; Ivana; Josip; Laptop4; Luka; Tea | 40h | 2,010 |
| 33 | 1.4.4.2 | PRVA PROVJERA | milestone | 0d | 2014-04-16 | 2014-04-16 | 32 | 0d |  |  |  |
| 34 | 1.4.4.3 | Generiranje SQL skripte |  | 2h | 2014-04-16 | 2014-04-17 | 33 | 0d | Filip; Ivana; Laptop1; Laptop4; Luka | 6h | 320 |
| 35 | 1.4.4.4 | Izrada idejnih skica ekrana |  | 1h | 2014-04-17 | 2014-04-17 | 34 | 0d | Josip; Laptop3; Tea | 2h | 110 |
| 36 | 1.5 | ZAVRŠETAK MODELIRANJA | milestone | 0d | 2014-04-17 | 2014-04-17 | 14 | 0d |  |  |  |
| 37 | 1.6 | **Realizacija programskog rješenja** |  | 14.5d | 2014-04-17 | 2014-06-12 | 36 | 0d |  | 264h | 13,300 |
| 38 | 1.6.1 | **Izrada aplikacije u .NET** |  | 11.5d | 2014-04-17 | 2014-06-02 | 36 | 0d |  | 184h | 9,250 |
| 39 | 1.6.1.1 | Izrada modula za pretraživanje lijekova |  | 22h | 2014-04-17 | 2014-04-28 | 36 | 0d | Filip; Ivana; Laptop1 | 44h | 2,210 |
| 40 | 1.6.1.2 | Izrada modula za logiranje u sustav |  | 18h | 2014-04-28 | 2014-05-07 | 39 | 0d | Josip; Luka; Laptop3 | 36h | 1,810 |
| 41 | 1.6.1.3 | Izrada modula za naručivanje lijekova |  | 18h | 2014-05-07 | 2014-05-15 | 40 | 0d | Filip; Laptop5; Tea | 36h | 1,810 |
| 42 | 1.6.1.4 | Izrada modula za ABC klasifikaciju |  | 16h | 2014-05-15 | 2014-05-23 | 41 | 0d | Ivana; Josip; Laptop3 | 32h | 1,610 |
| 43 | 1.6.1.5 | Izrada modula za analizu poslovanja |  | 18h | 2014-05-23 | 2014-06-02 | 42 | 0d | Laptop5; Luka; Tea | 36h | 1,810 |
| 44 | 1.6.2 | DRUGA PROVJERA | milestone | 0d | 2014-06-02 | 2014-06-02 | 43 | 0d |  |  |  |
| 45 | 1.6.3 | Testiranje programskog koda |  | 1d | 2014-06-02 | 2014-06-04 | 44 | 0d | Filip; Ivana; Josip; Laptop1; Laptop2 | 24h | 1,220 |
| 46 | 1.6.4 | Dorada aplikacije |  | 1d | 2014-06-04 | 2014-06-09 | 45 | 0d | Laptop5; Luka; Tea | 16h | 810 |
| 47 | 1.6.5 | Izrada projektne dokumentacije za završnu fazu |  | 1d | 2014-06-09 | 2014-06-12 | 46 | 0d | Filip; Ivana; Josip; Laptop2; Laptop4; Luka; Tea | 40h | 2,020 |
| 48 | 1.7 | REALIZACIJA ZAVRŠENA | milestone | 0d | 2014-06-12 | 2014-06-12 | 37 | 0d |  |  |  |
| 49 | 1.8 | **Isporuka programskog rješenja** |  | 0.12d | 2014-06-12 | 2014-06-12 | 48 | 0d |  | 5h | 270 |
| 50 | 1.8.1 | Javna prezentacija i obrana aplikacije |  | 1h | 2014-06-12 | 2014-06-12 | 48, 49 | 0d | Filip; Ivana; Josip; Laptop1; Luka; Projektor; Tea | 5h | 270 |
| 51 | 2 | PROJEKT ZAVRŠEN | milestone | 0d | 2014-06-12 | 2014-06-12 | 50 | 0d |  |  |  |
